# ProjectPlan

Schedule from MS Project, 2007-09-03 to 2007-11-30, A marks actual dates.
Booz Allen Hamilton

## Calendars

- Standard: Mon-Fri 08:00-12:00, 13:00-17:00; Sat-Sun off. Exceptions (off unless hours are given): 2007-09-16 08:00-12:00, 13:00-17:00, 2007-10-13 08:00-12:00, 13:00-17:00, 2007-10-21 08:00-12:00, 13:00-17:00, 2007-10-27 08:00-12:00, 13:00-17:00, 2007-11-24 08:00-12:00, 13:00-17:00.

## Schedule

| ID | WBS | Task | Duration | Start | Finish | Predecessors | Complete | Remaining | Total slack | Constraint |
| --- | --- | --- | --- | --- | --- | --- | --- | --- | --- | --- |
| 1 | 1 | WebSSO 0.5 Development | 65d | 2007-09-03 | 2007-11-24 |  |  |  | 5d | start no earlier than 2007-09-03 |
| 2 | 2 | **Requirements analysis** | 24d | 2007-09-03 A | 2007-10-03 A |  | 100% |  |  |  |
| 3 | 2.1 | Gather requirements from CCTS | 14d | 2007-09-03 A | 2007-09-19 A |  | 100% |  |  | start no earlier than 2007-09-03 |
| 4 | 2.2 | Review requirements | 9d | 2007-09-19 A | 2007-10-01 A | 3 | 100% |  |  | finish no earlier than 2007-09-17 |
| 5 | 2.3 | Finalize draft requirements | 7d | 2007-09-25 A | 2007-10-03 A | 4 | 100% |  |  | finish no earlier than 2007-09-24 |
| 6 | 3 | **Develop scope document** | 11d | 2007-09-28 A | 2007-10-12 A |  | 100% |  |  |  |
| 7 | 3.1 | Create draft scope document | 6d | 2007-09-28 A | 2007-10-05 A | 4 | 100% |  |  | start no earlier than 2007-09-17 |
| 8 | 3.2 | Review draft scope document | 2d | 2007-10-06 A | 2007-10-09 A | 7 | 100% |  |  |  |
| 9 | 3.3 | Finalize scope document/requirements | 3d | 2007-10-10 A | 2007-10-12 A | 8 | 100% |  |  | finish no earlier than 2007-10-12 |
| 10 | 4 | **Develop design** | 21d | 2007-10-11 A | 2007-11-05 |  | 99% | 0.15d | 20d |  |
| 11 | 4.1 | Develop a draft deign document | 9d | 2007-10-11 A | 2007-10-21 A | 8 | 100% |  |  | start no earlier than 2007-10-11 |
| 12 | 4.2 | Review design | 5d | 2007-10-22 A | 2007-10-26 A | 11 | 100% |  |  | start no earlier than 2007-10-22 |
| 13 | 4.3 | Develop draft interface APIs | 5d | 2007-10-22 A | 2007-10-26 A | 11 | 100% |  |  | finish no earlier than 2007-10-22 |
| 14 | 4.4 | Finalize design and document | 2d | 2007-10-27 A | 2007-10-29 A | 12 | 100% |  |  | start no earlier than 2007-10-27 |
| 15 | 4.5 | Review interface APIs | 5d | 2007-10-27 A | 2007-11-01 A | 13 | 100% |  |  | finish no earlier than 2007-10-26 |
| 16 | 4.6 | Finalize interface APIs | 2d | 2007-11-02 A | 2007-11-05 | 15 | 90% | 0.2d | 20d |  |
| 17 | 5 | **Implementation Development** | 22d | 2007-10-30 A | 2007-11-27 |  | 71% | 6.38d | 3d |  |
| 18 | 5.1 | Implementation | 22d | 2007-10-30 A | 2007-11-27 | 14 | 80% | 4.4d | 3d | finish no earlier than 2007-11-23 |
| 19 | 5.2 | Integration and Test | 18d | 2007-10-31 A | 2007-11-23 |  | 60% | 7.2d | 0d | finish no earlier than 2007-11-23 |
| 20 | 6 | **Documentation** | 15d | 2007-11-05 | 2007-11-23 |  |  |  | 6d |  |
| 21 | 6.1 | Release | 15d | 2007-11-05 | 2007-11-23 |  |  |  | 6d | finish no earlier than 2007-11-23 |
| 22 | 6.2 | Training | 15d | 2007-11-05 | 2007-11-23 |  |  |  | 6d | finish no earlier than 2007-11-23 |
| 23 | 7 | Build and Deployment | 5d | 2007-11-24 | 2007-11-29 | 19 |  |  | 0d | start no earlier than 2007-11-24 |
| 24 | 8 | WebSSO 0.5 release | 1d | 2007-11-30 | 2007-11-30 | 23 |  |  | 0d | finish no earlier than 2007-11-30 |
