# caGrid Development

Schedule from MS Project MPX, 2011-11-04 to 2011-11-15, A marks actual dates.

## Calendars

- Standard: Mon-Fri 8:00-12:00, 13:00-17:00; Sat-Sun off.

## Resources

| Resource |
| --- |
| Joe George |
| David Ervin |

## Schedule

| ID | WBS | Task | Duration | Start | Predecessors | Complete | Constraint | Resources |
| --- | --- | --- | --- | --- | --- | --- | --- | --- |
| 1 | 1 | **caGrid Release Plan** | 133.34h | 2011-11-04 A |  | 5% |  |  |
| 2 | 1.1 | **Iteration 1** | 93.34h | 2011-11-04 A |  | 12% |  |  |
| 3 | 1.1.1 | **Bug Fixes** | 93.34h | 2011-11-04 A |  | 34% |  |  |
| 4 | 1.1.1.1 | NCI Production LDAP Authentication Service allows user IDs with garbage appended | 26.67h | 2011-11-04 A |  |  | start no earlier than 2011-11-04 | Joe George |
| 5 | 1.1.1.2 | Update authentication Service to include configurable lockout settings | 66.67h | 2011-11-09 A | 4 | 80% |  | David Ervin; Joe George |
| 6 | 1.1.1.3 | Data Service Upgrader for 1.4 and 1.5 to 1.6 | 20.00h | 2011-11-04 A |  |  | start no earlier than 2011-11-04 | David Ervin; Joe George |
| 7 | 1.1.1.4 | Merge caCORE SDK 4.4 data service style project into caGrid 1.5 and trunk | 26.67h | 2011-11-04 A |  | 62% |  | David Ervin |
| 8 | 1.1.1.5 | Technical Status Report for October 2011 | 6.67h | 2011-11-04 A |  |  | start no earlier than 2011-11-04 | David Ervin |
| 9 | 1.1.1.6 | Technical Project Plan Update for October 2011 | 13.33h | 2011-11-04 A | 8 |  | start no earlier than 2011-11-04 | David Ervin |
| 10 | 1.1.1.7 | caCore SDK 4.x data service styles need upgraders to handle swapping out Spring versions for SHA2 support | 26.67h | 2011-11-09 A | 7 |  | start no earlier than 2011-11-04 | Joe George |
| 11 | 1.1.2 | **Documentation** | 50.00h | 2011-11-04 A |  |  |  |  |
| 12 | 1.1.2.1 | Update all necessary documentation and guides | 50.00h | 2011-11-04 A |  |  | start no earlier than 2011-11-04 | Joe George; David Ervin |
| 13 | 1.1.3 | **Testing** | 33.33h | 2011-11-04 A |  |  |  |  |
| 14 | 1.1.3.1 | Unit Testing | 33.33h | 2011-11-04 A |  |  | start no earlier than 2011-11-04 | Joe George; David Ervin |
| 15 | 1.1.3.2 | Integration Testing | 33.33h | 2011-11-04 A |  |  | start no earlier than 2011-11-04 | Joe George; David Ervin |
| 16 | 1.1.4 | **App Scan** | 28.00h | 2011-11-04 A |  |  |  |  |
| 17 | 1.1.4.1 | Perform App Scan Process | 8.00h | 2011-11-04 A |  |  | start no earlier than 2011-11-04 |  |
| 18 | 1.1.4.2 | Fix App Scan issues | 20.00h | 2011-11-07 A | 17 |  | start no earlier than 2011-11-04 | Joe George; David Ervin |
| 19 | 1.1.5 | **Deployment** | 62.67h | 2011-11-04 A |  |  |  |  |
| 20 | 1.1.5.1 | Move to Training and test | 16.00h | 2011-11-04 A |  |  | start no earlier than 2011-11-04 |  |
| 21 | 1.1.5.2 | Move to QA and test | 24.00h | 2011-11-08 A | 20 |  | start no earlier than 2011-11-04 |  |
| 22 | 1.1.5.3 | Move to Stage and test | 16.00h | 2011-11-11 A | 21 |  | start no earlier than 2011-11-04 |  |
| 23 | 1.1.5.4 | Move to Prod and test | 6.67h | 2011-11-15 A | 22 |  | start no earlier than 2011-11-04 | Joe George; David Ervin |
| 24 | 1.2 | **Iteration 2** | 133.34h | 2011-11-04 A |  |  |  |  |
| 25 | 1.2.1 | **Bug Fixes** | 133.34h | 2011-11-04 A |  |  |  |  |
| 26 | 1.2.1.1 | caGrid w/ SHA2 release | 133.34h | 2011-11-04 A |  |  | start no earlier than 2011-11-04 | Joe George |
| 27 | 1.2.1.2 | SHA-2 support | 8.00h | 2011-11-04 A |  |  | start no earlier than 2011-11-04 |  |
| 28 | 1.2.1.3 | Begin 1.5 Production Install | 6.67h | 2011-11-04 A |  |  | start no earlier than 2011-11-04 | David Ervin; Joe George |

Notes:
- 1: The release following the SHA 2 release, currently known as 1.6

| ID | WBS | Task | Duration | Start | Constraint | Resources |
| --- | --- | --- | --- | --- | --- | --- |
| 29 | 1.2.2 | **Documentation** | 50.00h | 2011-11-04 A |  |  |
| 30 | 1.2.2.1 | Update all necessary documentation and guides | 50.00h | 2011-11-04 A | start no earlier than 2011-11-04 | Joe George; David Ervin |
| 31 | 1.2.2.2 | Create new install documentation | 40.00h | 2011-11-04 A | start no earlier than 2011-11-04 | Joe George |
| 32 | 1.2.3 | **Testing** | 66.67h | 2011-11-04 A |  |  |
| 33 | 1.2.3.1 | Unit Testing | 66.67h | 2011-11-04 A | start no earlier than 2011-11-04 | Joe George |
| 34 | 1.2.3.2 | Integration Testing | 66.67h | 2011-11-04 A | start no earlier than 2011-11-04 | David Ervin |
| 35 | 1.2.4 | **App Scan** | 8.00h | 2011-11-04 A |  |  |
| 36 | 1.2.4.1 | Perform App Scan Process | 8.00h | 2011-11-04 A | start no earlier than 2011-11-04 |  |
| 37 | 1.2.4.2 | Fix App Scan issues | 8.00h | 2011-11-04 A | start no earlier than 2011-11-04 |  |
| 38 | 1.2.5 | **Deployment** | 8.00h | 2011-11-04 A |  |  |
| 39 | 1.2.5.1 | Move to Training and test | 8.00h | 2011-11-04 A | start no earlier than 2011-11-04 |  |
| 40 | 1.2.5.2 | Move to QA and test | 8.00h | 2011-11-04 A | start no earlier than 2011-11-04 |  |
| 41 | 1.2.5.3 | Move to Stage and test | 8.00h | 2011-11-04 A | start no earlier than 2011-11-04 |  |
| 42 | 1.2.5.4 | Move to Prod and test | 8.00h | 2011-11-04 A | start no earlier than 2011-11-04 |  |
| 43 | 1.3 | **Iteration 3** | 8.00h | 2011-11-04 A |  |  |
| 44 | 1.3.1 | **Bug Fixes** | 8.00h | 2011-11-04 A |  |  |
| 45 | 1.3.1.1 | Upgraders for SDK 4.3 data services from 1.5 and 1.4 to 1.6 | 8.00h | 2011-11-04 A | start no earlier than 2011-11-04 |  |
| 46 | 1.3.1.2 | Technical Status Report | 8.00h | 2011-11-04 A | start no earlier than 2011-11-04 |  |
| 47 | 1.3.1.3 | Technical Project Plan | 8.00h | 2011-11-04 A | start no earlier than 2011-11-04 |  |
| 48 | 1.3.1.4 | Plan for a 1.4.1 release to follow 1.4 that adds Tomcat 6 & JBoss 5 support | 8.00h | 2011-11-04 A | start no earlier than 2011-11-04 |  |
| 49 | 1.3.1.5 | Fix projects in caGrid to use WS-Core artifacts from Ivy rather than relying on GLOBUS_LOCATION | 8.00h | 2011-11-04 A | start no earlier than 2011-11-04 |  |
| 50 | 1.3.1.6 | Figure out at what point the SDK data service is failing to serialize results | 8.00h | 2011-11-04 A | start no earlier than 2011-11-04 |  |
| 51 | 1.3.1.7 | FQP performance and scalability enhancements | 8.00h | 2011-11-04 A | start no earlier than 2011-11-04 |  |
| 52 | 1.3.1.8 | Possible bug: Missing jars when producing caCORE SDK 4.1 backed local grid services | 8.00h | 2011-11-04 A | start no earlier than 2011-11-04 |  |
| 53 | 1.3.1.9 | GAARDS UI Target Grid selector needs completely redone | 8.00h | 2011-11-04 A | start no earlier than 2011-11-04 |  |
| 54 | 1.3.1.10 | Error connecting to GridGrouper with an authenticated account | 8.00h | 2011-11-04 A | start no earlier than 2011-11-04 |  |
| 55 | 1.3.1.11 | Identify all secure services on the Production Grid | 8.00h | 2011-11-04 A | start no earlier than 2011-11-04 |  |
| 56 | 1.3.1.12 | Identify all secure services on the Training Grid | 8.00h | 2011-11-04 A | start no earlier than 2011-11-04 |  |
| 57 | 1.3.1.13 | A way to add new target grids to the top-level configure target | 8.00h | 2011-11-04 A | start no earlier than 2011-11-04 |  |
| 58 | 1.3.1.14 | Create new installation documentation | 8.00h | 2011-11-04 A | start no earlier than 2011-11-04 |  |
| 59 | 1.3.1.15 | Create upgrade documentation | 8.00h | 2011-11-04 A | start no earlier than 2011-11-04 |  |
| 60 | 1.3.1.16 | Inconsistent user and host search operation behavior | 8.00h | 2011-11-04 A | start no earlier than 2011-11-04 |  |
| 61 | 1.3.1.17 | Breakup the ws-core ivy module to have finer grain configurations | 8.00h | 2011-11-04 A | start no earlier than 2011-11-04 |  |
| 62 | 1.3.1.18 | Support Viewing/Signing Host Certificate Policies in GAARDS UI | 8.00h | 2011-11-04 A | start no earlier than 2011-11-04 |  |
| 63 | 1.3.1.19 | Implement support for viewing and digitally signing host policy agreement during host certificate request | 8.00h | 2011-11-04 A | start no earlier than 2011-11-04 |  |
| 64 | 1.3.1.20 | Modify build to have a resolver chain specific for target grids, and allow working with external grids | 8.00h | 2011-11-04 A | start no earlier than 2011-11-04 |  |
| 65 | 1.3.1.21 | Add support in installer to work with a list of supported target grid repositories | 8.00h | 2011-11-04 A | start no earlier than 2011-11-04 |  |

| ID | WBS | Task | Duration | Start | Constraint |
| --- | --- | --- | --- | --- | --- |
| 66 | 1.3.2 | **Documentation** | 8.00h | 2011-11-04 A |  |
| 67 | 1.3.2.1 | Update all necessary documentation and guides | 8.00h | 2011-11-04 A | start no earlier than 2011-11-04 |
| 68 | 1.3.3 | **Testing** | 8.00h | 2011-11-04 A |  |
| 69 | 1.3.3.1 | Unit Testing | 8.00h | 2011-11-04 A | start no earlier than 2011-11-04 |
| 70 | 1.3.3.2 | Integration Testing | 8.00h | 2011-11-04 A | start no earlier than 2011-11-04 |
| 71 | 1.3.4 | **App Scan** | 8.00h | 2011-11-04 A |  |
| 72 | 1.3.4.1 | Perform App Scan Process | 8.00h | 2011-11-04 A | start no earlier than 2011-11-04 |
| 73 | 1.3.4.2 | Fix App Scan issues | 8.00h | 2011-11-04 A | start no earlier than 2011-11-04 |
| 74 | 1.3.5 | **Deployment** | 8.00h | 2011-11-04 A |  |
| 75 | 1.3.5.1 | Move to Training and test | 8.00h | 2011-11-04 A | start no earlier than 2011-11-04 |
| 76 | 1.3.5.2 | Move to QA and test | 8.00h | 2011-11-04 A | start no earlier than 2011-11-04 |
| 77 | 1.3.5.3 | Move to Stage and test | 8.00h | 2011-11-04 A | start no earlier than 2011-11-04 |
| 78 | 1.3.5.4 | Move to Prod and test | 8.00h | 2011-11-04 A | start no earlier than 2011-11-04 |
