Schedule from OmniPlan, 2001-01-01 to 2001-01-01.
Project start 2011-11-04

## Resources

| Resource | Group |
| --- | --- |
| Joe George | staff |
| David Ervin | staff |

## Schedule

| ID | WBS | Task | Start | Predecessors | Complete | Resources | Work | Actual work |
| --- | --- | --- | --- | --- | --- | --- | --- | --- |
| 1 | 1 | **caGrid Release Plan** | 2001-01-01 |  |  |  |  |  |
| 2 | 1.1 | **Iteration 1** | 2001-01-01 |  |  |  |  |  |
| 3 | 1.1.1 | **Bug Fixes** | 2001-01-01 |  |  |  |  |  |
| 4 | 1.1.1.1 | NCI Production LDAP Authentication Service allows user IDs with garbage appended |  |  |  | Joe George [60%] | 16h |  |
| 5 | 1.1.1.2 | Update authentication Service to include configurable lockout settings |  | 4 | 80% | David Ervin [30%]; Joe George [30%] | 40h | 32h |
| 6 | 1.1.1.3 | Data Service Upgrader for 1.4 and 1.5 to 1.6 |  |  |  | David Ervin [60%]; Joe George [60%] | 24h |  |
| 7 | 1.1.1.4 | Merge caCORE SDK 4.4 data service style project into caGrid 1.5 and trunk |  |  | 62% | David Ervin [60%] | 16h | 10h |
| 8 | 1.1.1.5 | Technical Status Report for October 2011 |  |  |  | David Ervin [60%] | 4h |  |
| 9 | 1.1.1.6 | Technical Project Plan Update for October 2011 |  | 8 |  | David Ervin [60%] | 8h |  |
| 10 | 1.1.1.7 | caCore SDK 4.x data service styles need upgraders to handle swapping out Spring versions for SHA2 support |  | 7 |  | Joe George [60%] | 16h |  |
| 11 | 1.1.2 | **Documentation** | 2001-01-01 |  |  |  |  |  |
| 12 | 1.1.2.1 | Update all necessary documentation and guides |  |  |  | Joe George [60%]; David Ervin [60%] | 60h |  |
| 13 | 1.1.3 | **Testing** | 2001-01-01 |  |  |  |  |  |
| 14 | 1.1.3.1 | Unit Testing |  |  |  | Joe George [60%]; David Ervin [60%] | 40h |  |
| 15 | 1.1.3.2 | Integration Testing |  |  |  | Joe George [60%]; David Ervin [60%] | 40h |  |
| 16 | 1.1.4 | **App Scan** | 2001-01-01 |  |  |  |  |  |
| 17 | 1.1.4.1 | Perform App Scan Process |  |  |  |  | 8h |  |
| 18 | 1.1.4.2 | Fix App Scan issues |  | 17 |  | Joe George [60%]; David Ervin [60%] | 24h |  |
| 19 | 1.1.5 | **Deployment** | 2001-01-01 |  |  |  |  |  |
| 20 | 1.1.5.1 | Move to Training and test |  |  |  |  | 16h |  |
| 21 | 1.1.5.2 | Move to QA and test |  | 20 |  |  | 24h |  |
| 22 | 1.1.5.3 | Move to Stage and test |  | 21 |  |  | 16h |  |
| 23 | 1.1.5.4 | Move to Prod and test |  | 22 |  | Joe George [60%]; David Ervin [60%] | 8h |  |
| 24 | 1.2 | **Iteration 2** | 2001-01-01 |  |  |  |  |  |
| 25 | 1.2.1 | **Bug Fixes** | 2001-01-01 |  |  |  |  |  |
| 26 | 1.2.1.1 | caGrid w/ SHA2 release |  |  |  | Joe George [60%] | 80h |  |
| 27 | 1.2.1.2 | SHA-2 support |  |  |  |  | 8h |  |
| 28 | 1.2.1.3 | Begin 1.5 Production Install |  |  |  | David Ervin [60%]; Joe George [60%] | 8h |  |

Notes:
- 1: Arial / 8 / left-to-right / 36 / The release following the SHA 2 release, currently known as 1.6

| ID | WBS | Task | Start | Resources | Work |
| --- | --- | --- | --- | --- | --- |
| 29 | 1.2.2 | **Documentation** | 2001-01-01 |  |  |
| 30 | 1.2.2.1 | Update all necessary documentation and guides |  | Joe George [60%]; David Ervin [60%] | 60h |
| 31 | 1.2.2.2 | Create new install documentation |  | Joe George [60%] | 24h |
| 32 | 1.2.3 | **Testing** | 2001-01-01 |  |  |
| 33 | 1.2.3.1 | Unit Testing |  | Joe George [60%] | 40h |
| 34 | 1.2.3.2 | Integration Testing |  | David Ervin [60%] | 40h |
| 35 | 1.2.4 | **App Scan** | 2001-01-01 |  |  |
| 36 | 1.2.4.1 | Perform App Scan Process |  |  | 8h |
| 37 | 1.2.4.2 | Fix App Scan issues |  |  | 8h |
| 38 | 1.2.5 | **Deployment** | 2001-01-01 |  |  |
| 39 | 1.2.5.1 | Move to Training and test |  |  | 8h |
| 40 | 1.2.5.2 | Move to QA and test |  |  | 8h |
| 41 | 1.2.5.3 | Move to Stage and test |  |  | 8h |
| 42 | 1.2.5.4 | Move to Prod and test |  |  | 8h |
| 43 | 1.3 | **Iteration 3** | 2001-01-01 |  |  |
| 44 | 1.3.1 | **Bug Fixes** | 2001-01-01 |  |  |
| 45 | 1.3.1.1 | Upgraders for SDK 4.3 data services from 1.5 and 1.4 to 1.6 |  |  | 8h |
| 46 | 1.3.1.2 | Technical Status Report |  |  | 8h |
| 47 | 1.3.1.3 | Technical Project Plan |  |  | 8h |
| 48 | 1.3.1.4 | Plan for a 1.4.1 release to follow 1.4 that adds Tomcat 6 & JBoss 5 support |  |  | 8h |
| 49 | 1.3.1.5 | Fix projects in caGrid to use WS-Core artifacts from Ivy rather than relying on GLOBUS_LOCATION |  |  | 8h |
| 50 | 1.3.1.6 | Figure out at what point the SDK data service is failing to serialize results |  |  | 8h |
| 51 | 1.3.1.7 | FQP performance and scalability enhancements |  |  | 8h |
| 52 | 1.3.1.8 | Possible bug: Missing jars when producing caCORE SDK 4.1 backed local grid services |  |  | 8h |
| 53 | 1.3.1.9 | GAARDS UI Target Grid selector needs completely redone |  |  | 8h |
| 54 | 1.3.1.10 | Error connecting to GridGrouper with an authenticated account |  |  | 8h |
| 55 | 1.3.1.11 | Identify all secure services on the Production Grid |  |  | 8h |
| 56 | 1.3.1.12 | Identify all secure services on the Training Grid |  |  | 8h |
| 57 | 1.3.1.13 | A way to add new target grids to the top-level configure target |  |  | 8h |
| 58 | 1.3.1.14 | Create new installation documentation |  |  | 8h |
| 59 | 1.3.1.15 | Create upgrade documentation |  |  | 8h |
| 60 | 1.3.1.16 | Inconsistent user and host search operation behavior |  |  | 8h |
| 61 | 1.3.1.17 | Breakup the ws-core ivy module to have finer grain configurations |  |  | 8h |
| 62 | 1.3.1.18 | Support Viewing/Signing Host Certificate Policies in GAARDS UI |  |  | 8h |
| 63 | 1.3.1.19 | Implement support for viewing and digitally signing host policy agreement during host certificate request |  |  | 8h |
| 64 | 1.3.1.20 | Modify build to have a resolver chain specific for target grids, and allow working with external grids |  |  | 8h |
| 65 | 1.3.1.21 | Add support in installer to work with a list of supported target grid repositories |  |  | 8h |

| ID | WBS | Task | Start | Work |
| --- | --- | --- | --- | --- |
| 66 | 1.3.2 | **Documentation** | 2001-01-01 |  |
| 67 | 1.3.2.1 | Update all necessary documentation and guides |  | 8h |
| 68 | 1.3.3 | **Testing** | 2001-01-01 |  |
| 69 | 1.3.3.1 | Unit Testing |  | 8h |
| 70 | 1.3.3.2 | Integration Testing |  | 8h |
| 71 | 1.3.4 | **App Scan** | 2001-01-01 |  |
| 72 | 1.3.4.1 | Perform App Scan Process |  | 8h |
| 73 | 1.3.4.2 | Fix App Scan issues |  | 8h |
| 74 | 1.3.5 | **Deployment** | 2001-01-01 |  |
| 75 | 1.3.5.1 | Move to Training and test |  | 8h |
| 76 | 1.3.5.2 | Move to QA and test |  | 8h |
| 77 | 1.3.5.3 | Move to Stage and test |  | 8h |
| 78 | 1.3.5.4 | Move to Prod and test |  | 8h |
