# 12ST1121-Technical

Schedule from MS Project XML, 2012-12-14 to 2013-10-01, A marks actual dates.

## Calendars

- Standard: Mon-Fri 08:00-12:00, 13:00-17:00; Sat-Sun off.

## Resources

| Resource | Rate |
| --- | --- |
| Inventrio Project Manager | 150 |
| Inventrio Software Architect | 160 |
| Inventrio Software Developer | 120 |
| Inventrio Systems Engineer | 120 |
| NCI Documentation |  |
| NCI Project Officer |  |
| NCI Quality Assurance |  |
| NCI Systems |  |
| SAIC-F Technical Project Manager |  |

## Schedule

| ID | WBS | Task | Duration | Start | Predecessors | Complete | Remaining | Actual finish | Total slack | Constraint | Resources | Work | Actual work |
| --- | --- | --- | --- | --- | --- | --- | --- | --- | --- | --- | --- | --- | --- |
| 1 | 1 | Operations, Maintenance, and Support | 9mo | 2013-01-22 A |  | 20% |  |  | 0d | must finish on 2013-09-30 | Inventrio Software Developer |  |  |
| 2 | 2 | **Iteration 1 - Design Approach** | 0d | 2012-12-14 |  | 100% |  |  | 0d | must start on 2013-01-03 |  |  |  |
| 3 | 2.1 | Start | 0h | 2013-01-03 A |  | 100% | 0h |  | 0d |  |  |  |  |
| 4 | 2.2 | Project Kickoff | 2.5h | 2012-12-14 A | 3 | 100% |  |  | 0d |  | Inventrio Project Manager; Inventrio Software Architect |  |  |
| 5 | 2.3 | Mandatory NCI Training and Account Setup | 1.25d | 2012-12-17 A | 4 | 100% | 0d |  | 0d |  |  | 10h | 10h |
| 6 | 2.4 | Migrate Training Grid to NCI | 70d | 2013-01-03 A | 4 | 100% |  | 2013-04-10 |  |  | Inventrio Software Architect [50%]; Inventrio Software Developer [50%] |  |  |
| 7 | 2.5 | **Migrate from Globus to WS* (new tech stack)** | 0d | 2013-02-04 | 4 | 100% |  |  | 0d |  |  |  |  |
| 8 | 2.5.1 | Investigate WSRF services in CXF | 3w | 2013-02-04 A | 4 | 100% | 0w |  | 0d |  |  | 120h | 120h |
| 9 | 2.5.2 | Migrate Dorian to CXF (validate approach) | 1.59mo | 2013-02-14 A | 22 | 100% |  | 2013-03-29 |  | as late as possible | Inventrio Software Architect [50%]; Inventrio Software Developer [50%] | 240h |  |
| 10 | 2.6 | **Migrate to SHA-2** | 0d | 2013-01-03 | 4 | 100% |  |  | 0d |  |  |  |  |
| 11 | 2.6.1 | Validate Prior SHA-2 work by caGrid team | 1w | 2013-01-03 A | 4 | 100% |  |  | 0d |  | Inventrio Software Architect | 40h |  |
| 12 | 2.7 | Migrate caGrid.org wiki | 2.5d | 2013-01-28 A | 5 | 100% |  |  | 0d |  | Inventrio Software Architect; Inventrio Project Manager | 40h |  |
| 13 | 2.8 | **Migration to Open Source Community (OSDI)** | 0d | 2013-01-03 | 4 | 100% |  |  | 0d |  |  |  |  |
| 14 | 2.8.1 | Start (Kick-off Meeting) | 4h | 2013-01-03 A | 4 | 100% | 0h |  | 0d |  |  | 4h | 4h |
| 15 | 2.8.2 | Migration of Agreed Repositories | 3.8w | 2013-01-03 A | 14 | 100% | 0w |  | 0d |  |  | 152h | 152h |
| 16 | 2.8.3 | Finish (Close-out Meeting) | 4h | 2013-01-30 A | 15 | 100% | 0h |  | 0d |  |  | 4h | 4h |
| 17 | 2.9 | Quarterly In-Process Review | 2h | 2013-04-01 A | 9, 4, 54, 11, 12, 52, 53 | 100% |  |  | 0d |  | Inventrio Project Manager; Inventrio Software Architect; NCI Project Officer; SAIC-F Technical Project Manager |  |  |
| 18 | 2.10 | End Iteration 1 | 0h | 2013-04-01 A | 17 | 100% | 0h |  | 0d | must finish on 2013-03-29 |  |  |  |
| 19 | 3 | **Iteration 2 - Implementation** | 0d | 2013-02-25 |  | 85% |  |  | 0d | must start on 2013-04-01 |  |  |  |
| 20 | 3.1 | Start | 0h | 2013-04-17 A | 18 | 100% | 0h |  | 0d |  |  |  |  |
| 21 | 3.2 | **Migrate from Globus to WS*** | 0d | 2013-02-25 |  | 80% |  |  | 0d |  |  |  |  |
| 22 | 3.2.1 | Develop Migration Approach | 2.25mo | 2013-02-25 A |  | 100% |  | 2013-04-26 |  |  | Inventrio Project Manager | 80h |  |
| 23 | 3.2.2 | **Migrate to CXF** | 0d | 2013-04-01 |  | 81% |  |  | 0d |  |  |  |  |
| 24 | 3.2.2.1 | Finish Dorian | 2.25mo | 2013-04-01 A | 9 | 95% |  |  | 0d |  | Inventrio Software Developer | 360h |  |
| 25 | 3.2.2.2 | CDS | 2w | 2013-04-30 A | 20 | 85% |  |  | 0d |  | Inventrio Software Developer | 80h |  |
| 26 | 3.2.2.3 | GME | 2w | 2013-04-17 A | 20 | 85% |  |  | 0d |  | Inventrio Software Architect | 80h |  |
| 27 | 3.2.2.4 | Authentication Service | 2w | 2013-04-17 | 20 |  |  |  | 0d |  | Inventrio Software Developer | 80h |  |
| 28 | 3.2.2.5 | Grid Grouper | 2w | 2013-05-20 A | 20 | 95% |  |  | 0d |  | Inventrio Software Developer | 80h |  |
| 29 | 3.2.2.6 | GTS | 2w | 2013-04-17 A | 20 | 85% |  |  | 0d |  | Inventrio Software Developer | 80h |  |

| ID | WBS | Task | Duration | Start | Predecessors | Complete | Remaining | Total slack | Constraint | Resources | Work | Actual work |
| --- | --- | --- | --- | --- | --- | --- | --- | --- | --- | --- | --- | --- |
| 30 | 3.2.3 | **Patch to work with 2.0/CXF** | 0d | 2013-04-01 |  | 13% |  | 0d |  |  |  |  |
| 31 | 3.2.3.1 | Index Service | 1w | 2013-04-01 A |  | 40% | 0.6w | 0d |  |  | 40h | 16h |
| 32 | 3.2.3.2 | FQP | 1w | 2013-04-01 |  |  |  | 0d |  |  | 40h |  |
| 33 | 3.2.3.3 | Taverna | 1w | 2013-04-01 |  |  |  | 0d |  |  | 40h |  |
| 34 | 3.3 | **Migrate CA to SHA-2** | 0d | 2013-04-29 |  | 100% |  | 0d |  |  |  |  |
| 35 | 3.3.1 | Software Development | 45d | 2013-04-29 A | 22, 11 | 100% |  | 0d |  | Inventrio Software Developer |  |  |
| 36 | 3.4 | Design Review Meeting | 2h | 2013-04-29 A | 11, 22 | 100% |  | 0d |  | SAIC-F Technical Project Manager; Inventrio Project Manager; Inventrio Software Architect |  |  |
| 37 | 3.5 | Quarterly In-Process Review | 2h | 2013-07-01 A | 6, 24, 20, 35 | 100% |  | 0d |  | Inventrio Project Manager; Inventrio Software Architect; NCI Project Officer; SAIC-F Technical Project Manager |  |  |
| 38 | 3.6 | End Iteration 2 | 0h | 2013-07-01 | 37 |  |  | 0d |  |  |  |  |
| 39 | 4 | **Iteration 3 - Deployment and Delivery** | 0d | 2013-07-01 |  | 24% |  | 0d | must start on 2013-07-01 |  |  |  |
| 40 | 4.1 | Start | 0h | 2013-07-01 A | 38 | 100% | 0h | 0d |  |  |  |  |
| 41 | 4.2 | Operational Readiness Review | 2h | 2013-07-01 A | 40 | 100% | 0h | 0d |  |  |  | 2h |
| 42 | 4.3 | **Migrate to SHA-2** | 0d | 2013-07-01 |  | 50% |  | 0d |  |  |  |  |
| 43 | 4.3.1 | Finish Development | 1.5mo | 2013-07-01 A | 35 | 50% |  | 0d |  | Inventrio Software Developer | 240h |  |
| 44 | 4.4 | Quality Assurance | 3w | 2013-08-12 A | 43 | 10% |  | 0d |  | NCI Quality Assurance | 120h |  |
| 45 | 4.5 | Documentation | 2w | 2013-08-12 A | 24, 18, 43 | 10% |  | 0d |  | NCI Documentation | 80h |  |
| 46 | 4.6 | **Deployment** | 0d | 2013-07-01 |  |  |  | 0d |  |  |  |  |
| 47 | 4.6.1 | Architecture Review Checklist | 1w | 2013-07-01 | 41 |  |  | 0d |  | Inventrio Project Manager | 40h |  |
| 48 | 4.6.2 | Deployment to Stage | 1w | 2013-09-02 | 45, 44 |  |  | 0d |  | NCI Systems | 40h |  |
| 49 | 4.6.3 | Deployment to Production | 1w | 2013-09-09 | 48 |  |  | 0d |  | NCI Systems | 40h |  |
| 50 | 4.7 | Quarterly In-Process Review | 2h | 2013-07-01 | 12, 13 |  |  | 0d |  | NCI Project Officer; SAIC-F Technical Project Manager; Inventrio Project Manager; Inventrio Software Architect |  |  |
| 51 | 4.8 | End Iteration 3 | 0h | 2013-07-01 | 50 |  |  | 0d |  |  |  |  |
| 52 | 5 | Information Systems Security Plan | 2w | 2013-01-01 A | 4 | 100% |  | 0d |  | Inventrio Software Architect | 80h |  |
| 53 | 6 | Technical Project Plan | 2.25d | 2013-01-03 A | 4 | 30% |  | 0d | finish no later than 2013-01-22 | Inventrio Project Manager; Inventrio Software Architect | 36h |  |
| 54 | 7 | Financial Project Plan | 2.25d | 2013-01-01 A | 4 | 30% |  | 0d |  | Inventrio Project Manager; Inventrio Software Architect | 36h |  |
| 55 | 8 | Project Summary Report | 5d | 2013-10-01 | 1, 51 |  |  | 0d |  | Inventrio Project Manager |  |  |
