# 13XS487-Technical

Schedule from MS Project MPX, 2013-07-22 to 2014-09-18, A marks actual dates.

## Calendars

- Standard: Mon-Fri 08:00-12:00, 13:00-17:00; Sat-Sun off.

## Resources

| Resource |
| --- |
| Lantern Three Project Manager |
| Lantern Three Software Architect |
| NCI Documentation |
| NCI Project Officer |
| NCI Quality Assurance |
| NCI Systems |
| SAIC-F Technical Project Manager |

## Schedule

| ID | WBS | Task | Type | Duration | Start | Predecessors | Complete | Actual finish | Constraint | Resources |
| --- | --- | --- | --- | --- | --- | --- | --- | --- | --- | --- |
| 1 | 1 | Start | milestone | 0d | 2013-10-18 A |  | 100% | 2013-10-18 | start no earlier than 2013-10-18 |  |
| 2 | 2 | **caGrid Architectural Mentoring** |  |  | 2013-10-18 | 1 |  |  |  |  |
| 3 | 2.1 | caGrid Operations & Maintenance |  | 1y | 2013-10-18 | 1 |  |  |  | Lantern Three Software Architect; Lantern Three Project Manager |
| 4 | 3 | **caGrid 2.0 Cookbook Development** |  |  | 2013-10-18 | 1 | 20% |  |  |  |
| 5 | 3.1 | Start | milestone | 0d | 2013-10-18 A | 1 | 100% | 2013-10-18 |  |  |
| 6 | 3.2 | Upgrading caGrid Services 1.x to SHA-2 |  | 1w | 2013-10-18 A | 5 | 100% |  |  | Lantern Three Software Architect |
| 7 | 3.3 | Splitting Grid Service Containers <?> |  | 1w | 2013-10-18 | 5 |  |  |  | Lantern Three Software Architect |
| 8 | 3.4 | Developing services for caGrid 2.0 |  | 3w | 2013-10-18 | 5 |  |  |  | Lantern Three Software Architect |
| 9 | 3.5 | End | milestone | 0d | 2013-11-07 | 7, 6, 8 |  |  |  |  |
| 10 | 4 | **caGrid 2.0 Deployment** |  |  | 2013-07-22 |  | 69% |  |  |  |
| 11 | 4.1 | Start | milestone | 0d | 2013-10-18 A | 1 | 100% | 2013-10-18 |  |  |
| 12 | 4.2 | Documentation |  | 3w | 2013-10-18 A | 11 | 100% | 2013-12-02 |  | Lantern Three Software Architect |
| 13 | 4.3 | **Deployment** |  |  | 2013-07-22 |  | 44% |  |  |  |
| 14 | 4.3.1 | Architecture Review Checklist |  | 1w | 2013-07-22 A | 11 | 100% | 2013-07-26 |  | Lantern Three Project Manager |
| 15 | 4.3.2 | Deployment to NCI QA |  | 1w | 2013-10-21 A | 14 | 100% | 2013-10-25 |  | NCI Systems |
| 16 | 4.3.3 | QA Testing |  | 3w | 2013-10-28 A | 15 | 50% |  |  | NCI Quality Assurance |
| 17 | 4.3.4 | App Scan |  | 3d | 2013-11-18 | 16 |  |  |  | NCI Systems |
| 18 | 4.3.5 | Deployment to NCI Stage |  | 1w | 2013-11-21 | 17 |  |  |  | NCI Systems |
| 19 | 4.3.6 | Deployment to NCI Production |  | 1w | 2013-11-28 | 18 |  |  |  | NCI Systems |
| 20 | 4.3.7 | End |  | 1d | 2013-12-05 | 16, 18, 15, 19, 14 |  |  |  |  |
| 21 | 5 | **caGrid 2.1 Development** |  |  | 2013-12-05 |  |  |  |  |  |
| 22 | 5.1 | Start |  | 0h | 2013-12-05 | 20 |  |  |  |  |
| 23 | 5.2 | **Service Development** |  |  | 2013-12-05 |  |  |  |  |  |
| 24 | 5.2.1 | Start |  | 0h | 2013-12-05 | 22 |  |  |  |  |
| 25 | 5.2.2 | MMS Service |  | 1.2w | 2013-12-06 | 24 |  |  |  |  |
| 26 | 5.2.3 | Index Service |  | 3w | 2013-12-06 | 24 |  |  |  |  |
| 27 | 5.2.4 | Authentication Service |  | 2w | 2013-12-06 | 24 |  |  |  |  |
| 28 | 5.2.5 | FQP |  | 2w | 2013-12-06 | 24 |  |  |  |  |
| 29 | 5.2.6 | Taverna |  | 3w | 2013-12-06 | 24 |  |  |  |  |
| 30 | 5.2.7 | ID Prefix |  | 1w | 2013-12-06 | 24 |  |  |  |  |
| 31 | 5.2.8 | ID Naming |  | 1.2w | 2013-12-06 | 24 |  |  |  |  |
| 32 | 5.2.9 | SyncGTS |  | 2.5w | 2013-12-06 | 24 |  |  |  |  |
| 33 | 5.2.10 | End |  | 1d | 2013-12-27 | 25, 31, 30, 27, 32, 26, 29, 28 |  |  |  |  |

Notes:
- 12: https://cagrid.org/display/caGrid20/Home

| ID | WBS | Task | Type | Duration | Start | Predecessors |
| --- | --- | --- | --- | --- | --- | --- |
| 34 | 5.3 | **Other Activities** |  |  | 2013-12-05 |  |
| 35 | 5.3.1 | Start |  | 0h | 2013-12-05 | 22 |
| 36 | 5.3.2 | Project Management |  | 1w | 2013-12-06 | 35 |
| 37 | 5.3.3 | Training Grid Update |  | 1w | 2013-12-30 | 33 |
| 38 | 5.3.4 | Deployment Documentation |  | 2w | 2013-12-30 | 33 |
| 39 | 5.3.5 | SHA-2 |  | 0h | 2013-12-05 | 35 |
| 40 | 5.3.6 | WSRF Libraries |  | 0h | 2013-12-05 | 35 |
| 41 | 5.3.7 | Testing |  | 1.5w | 2013-12-30 | 33 |
| 42 | 5.3.8 | Target Grid |  | 0h | 2013-12-27 | 33 |
| 43 | 5.3.9 | Jenkins Setup |  | 1d | 2013-12-06 | 35 |
| 44 | 5.3.10 | Deployment Support |  | 3d | 2014-01-08 | 41 |
| 45 | 5.3.11 | End |  | 0h | 2014-01-10 | 40, 36, 38, 42, 39, 43, 37, 41 |
| 46 | 5.4 | End |  | 0h | 2014-01-10 | 45, 33 |
| 47 | 6 | End | milestone | 0d | 2014-09-18 | 46, 2, 3, 20, 4, 9 |
