# 13XS487-Technical

Schedule from MS Project XML, 2013-07-22 to 2014-09-18, A marks actual dates.

## Calendars

- Standard: Mon-Fri 08:00-12:00, 13:00-17:00; Sat-Sun off.

## Resources

| Resource |
| --- |
| Lantern Three Project Manager |
| Lantern Three Software Architect |
| NCI Documentation |
| NCI Project Officer |
| NCI Quality Assurance |
| NCI Systems |
| SAIC-F Technical Project Manager |

## Schedule

| ID | WBS | Task | Type | Duration | Start | Predecessors | Complete | Actual finish | Total slack | Constraint | Resources | Work |
| --- | --- | --- | --- | --- | --- | --- | --- | --- | --- | --- | --- | --- |
| 1 | 1 | Start | milestone | 0h | 2013-10-18 A |  | 100% | 2013-10-18 |  | start no earlier than 2013-10-18 |  |  |
| 2 | 2 | **caGrid Architectural Mentoring** |  | 0d | 2013-10-18 | 1 |  |  | 0d |  |  |  |
| 3 | 2.1 | caGrid Operations & Maintenance |  | 240d | 2013-10-18 | 1 |  |  | 0d |  | Lantern Three Software Architect; Lantern Three Project Manager |  |
| 4 | 3 | **caGrid 2.0 Cookbook Development** |  | 0d | 2013-10-18 | 1 | 20% |  | 0d |  |  |  |
| 5 | 3.1 | Start | milestone | 0h | 2013-10-18 A | 1 | 100% | 2013-10-18 |  |  |  |  |
| 6 | 3.2 | Upgrading caGrid Services 1.x to SHA-2 |  | 1w | 2013-10-18 A | 5 | 100% |  | 0d |  | Lantern Three Software Architect | 40h |
| 7 | 3.3 | Splitting Grid Service Containers <?> |  | 1w | 2013-10-18 | 5 |  |  | 0d |  | Lantern Three Software Architect | 40h |
| 8 | 3.4 | Developing services for caGrid 2.0 |  | 3w | 2013-10-18 | 5 |  |  | 0d |  | Lantern Three Software Architect | 120h |
| 9 | 3.5 | End | milestone | 0h | 2013-11-07 | 7, 6, 8 |  |  | 0d |  |  |  |
| 10 | 4 | **caGrid 2.0 Deployment** |  | 0d | 2013-07-22 |  | 69% |  | 0d |  |  |  |
| 11 | 4.1 | Start | milestone | 0h | 2013-10-18 A | 1 | 100% | 2013-10-18 |  |  |  |  |
| 12 | 4.2 | Documentation |  | 1.6mo | 2013-10-18 A | 11 | 100% | 2013-12-02 |  |  | Lantern Three Software Architect | 120h |
| 13 | 4.3 | **Deployment** |  | 0d | 2013-07-22 |  | 44% |  | 0d |  |  |  |
| 14 | 4.3.1 | Architecture Review Checklist |  | 4.75d | 2013-07-22 A | 11 | 100% | 2013-07-26 |  |  | Lantern Three Project Manager | 40h |
| 15 | 4.3.2 | Deployment to NCI QA |  | 4.75d | 2013-10-21 A | 14 | 100% | 2013-10-25 |  |  | NCI Systems | 40h |
| 16 | 4.3.3 | QA Testing |  | 3w | 2013-10-28 A | 15 | 50% |  | 0d |  | NCI Quality Assurance | 120h |
| 17 | 4.3.4 | App Scan |  | 3d | 2013-11-18 | 16 |  |  | 0d |  | NCI Systems |  |
| 18 | 4.3.5 | Deployment to NCI Stage |  | 1w | 2013-11-21 | 17 |  |  | 0d |  | NCI Systems | 40h |
| 19 | 4.3.6 | Deployment to NCI Production |  | 1w | 2013-11-28 | 18 |  |  | 0d |  | NCI Systems | 40h |
| 20 | 4.3.7 | End |  | 1d? | 2013-12-05 | 16, 18, 15, 19, 14 |  |  | 0d |  |  | 8h |
| 21 | 5 | **caGrid 2.1 Development** |  | 0d | 2013-12-05 |  |  |  | 0d |  |  |  |
| 22 | 5.1 | Start |  | 0h | 2013-12-05 | 20 |  |  | 0d |  |  |  |
| 23 | 5.2 | **Service Development** |  | 0d | 2013-12-05 |  |  |  | 0d |  |  |  |
| 24 | 5.2.1 | Start |  | 0h | 2013-12-05 | 22 |  |  | 0d |  |  |  |
| 25 | 5.2.2 | MMS Service |  | 1.25w | 2013-12-06 | 24 |  |  | 0d |  |  | 50h |
| 26 | 5.2.3 | Index Service |  | 3w | 2013-12-06 | 24 |  |  | 0d |  |  | 120h |
| 27 | 5.2.4 | Authentication Service |  | 2w | 2013-12-06 | 24 |  |  | 0d |  |  | 80h |
| 28 | 5.2.5 | FQP |  | 2w | 2013-12-06 | 24 |  |  | 0d |  |  | 80h |
| 29 | 5.2.6 | Taverna |  | 3w | 2013-12-06 | 24 |  |  | 0d |  |  | 120h |
| 30 | 5.2.7 | ID Prefix |  | 1w | 2013-12-06 | 24 |  |  | 0d |  |  | 40h |
| 31 | 5.2.8 | ID Naming |  | 1.25w | 2013-12-06 | 24 |  |  | 0d |  |  | 50h |
| 32 | 5.2.9 | SyncGTS |  | 2.5w | 2013-12-06 | 24 |  |  | 0d |  |  | 100h |
| 33 | 5.2.10 | End |  | 1d? | 2013-12-27 | 25, 31, 30, 27, 32, 26, 29, 28 |  |  | 0d |  |  | 8h |

Notes:
- 12: https://cagrid.org/display/caGrid20/Home

| ID | WBS | Task | Type | Duration | Start | Predecessors | Total slack | Work |
| --- | --- | --- | --- | --- | --- | --- | --- | --- |
| 34 | 5.3 | **Other Activities** |  | 0d | 2013-12-05 |  | 0d |  |
| 35 | 5.3.1 | Start |  | 0h | 2013-12-05 | 22 | 0d |  |
| 36 | 5.3.2 | Project Management |  | 1w | 2013-12-06 | 35 | 0d | 40h |
| 37 | 5.3.3 | Training Grid Update |  | 1w | 2013-12-30 | 33 | 0d | 40h |
| 38 | 5.3.4 | Deployment Documentation |  | 2w | 2013-12-30 | 33 | 0d | 80h |
| 39 | 5.3.5 | SHA-2 |  | 0h | 2013-12-05 | 35 | 0d |  |
| 40 | 5.3.6 | WSRF Libraries |  | 0h | 2013-12-05 | 35 | 0d |  |
| 41 | 5.3.7 | Testing |  | 1.5w | 2013-12-30 | 33 | 0d | 60h |
| 42 | 5.3.8 | Target Grid |  | 0h | 2013-12-27 | 33 | 0d |  |
| 43 | 5.3.9 | Jenkins Setup |  | 1d | 2013-12-06 | 35 | 0d | 8h |
| 44 | 5.3.10 | Deployment Support |  | 3d | 2014-01-08 | 41 | 0d | 24h |
| 45 | 5.3.11 | End |  | 0h | 2014-01-10 | 40, 36, 38, 42, 39, 43, 37, 41 | 0d |  |
| 46 | 5.4 | End |  | 0h | 2014-01-10 | 45, 33 | 0d |  |
| 47 | 6 | End | milestone | 0h | 2014-09-18 | 46, 2, 3, 20, 4, 9 | 0d |  |
