# caGrid_Development1

Schedule from MS Project, 2006-04-17 to 2006-10-23.

## Calendars

- Standard: Mon-Fri 08:00-12:00, 13:00-17:00; Sat-Sun off.

## Schedule

| ID | WBS | Task | Duration | Start | Finish | Predecessors | Total slack | Free slack | Constraint | Text1 |
| --- | --- | --- | --- | --- | --- | --- | --- | --- | --- | --- |
| 1 | 1 | **caGrid 1.0 Development** | 136d? | 2006-04-17 | 2006-10-23 |  | 0d |  |  |  |
| 2 | 1.1 | **Software Development Prior to Beta Release** | 40d? | 2006-04-17 | 2006-06-09 |  | 36d | 0d |  |  |
| 3 | 1.1.1 | **Iteration I** | 25d? | 2006-04-17 | 2006-05-19 |  | 36d | 0d |  |  |
| 4 | 1.1.1.1 | **Data Services** | 15d | 2006-04-17 | 2006-05-05 |  | 46d |  |  | 6.4.4, 6.4.4.1 |
| 5 | 1.1.1.1.1 | Finalize CQL Schema | 5d | 2006-05-01 | 2006-05-05 |  | 46d |  | start no earlier than 2006-05-01 |  |
| 6 | 1.1.1.1.2 | Initial Design Document | 5d | 2006-04-17 | 2006-04-21 |  | 56d |  |  |  |
| 7 | 1.1.1.2 | **Introduce** | 15d | 2006-05-01 | 2006-05-19 |  | 36d |  |  | 6.4.2, 6.4.2.1,6.4.2.2,6.4.3 |
| 8 | 1.1.1.2.1 | asdf | 15d | 2006-05-01 | 2006-05-19 |  | 36d |  | start no earlier than 2006-05-01 |  |
| 9 | 1.1.1.3 | **Metadata** | 9d? | 2006-04-17 | 2006-04-27 |  | 52d |  |  |  |
| 10 | 1.1.1.3.1 | **Initial Analytical Metadata Model** | 4d? | 2006-04-17 | 2006-04-20 |  | 52d | 0d |  |  |
| 11 | 1.1.1.3.1.1 | UML Model | 2d | 2006-04-17 | 2006-04-18 |  | 59d |  |  |  |
| 12 | 1.1.1.3.1.2 | Generate XSD | 1d? | 2006-04-19 | 2006-04-19 | 11 | 57d | 0d |  |  |
| 13 | 1.1.1.3.1.3 | caDSR Review | 1d? | 2006-04-20 | 2006-04-20 | 12 | 57d |  |  |  |
| 14 | 1.1.1.3.2 | **Initial Common Metadata Model** | 4d? | 2006-04-17 | 2006-04-20 |  | 52d | 0d |  |  |
| 15 | 1.1.1.3.2.1 | UML Model | 2d | 2006-04-17 | 2006-04-18 |  | 59d |  |  |  |
| 16 | 1.1.1.3.2.2 | Generate XSD | 1d? | 2006-04-19 | 2006-04-19 | 15 | 57d | 0d |  |  |
| 17 | 1.1.1.3.2.3 | caDSR Review | 1d? | 2006-04-20 | 2006-04-20 | 16 | 57d |  |  |  |
| 18 | 1.1.1.3.3 | **Initial Data Service Metadata Model** | 4d? | 2006-04-17 | 2006-04-20 |  | 52d | 0d |  |  |
| 19 | 1.1.1.3.3.1 | UML Model | 2d | 2006-04-17 | 2006-04-18 |  | 59d |  |  |  |
| 20 | 1.1.1.3.3.2 | Generate XSD | 1d? | 2006-04-19 | 2006-04-19 | 19 | 57d | 0d |  |  |
| 21 | 1.1.1.3.3.3 | caDSR Review | 1d? | 2006-04-20 | 2006-04-20 | 20 | 57d |  |  |  |
| 22 | 1.1.1.3.4 | **Discovery Client** | 5d | 2006-04-21 | 2006-04-27 | 10, 14, 18 | 52d |  |  |  |
| 23 | 1.1.1.3.4.1 | Define API | 2d | 2006-04-21 | 2006-04-24 |  | 55d |  |  |  |
| 24 | 1.1.1.3.4.2 | Initial Implementation | 5d | 2006-04-21 | 2006-04-27 |  | 52d |  |  |  |

| ID | WBS | Task | Duration | Start | Finish | Predecessors | Total slack | Free slack | Constraint | Text1 |
| --- | --- | --- | --- | --- | --- | --- | --- | --- | --- | --- |
| 25 | 1.1.1.3.5 | **Index Service** | 1d | 2006-04-17 | 2006-04-17 |  | 60d |  |  |  |
| 26 | 1.1.1.3.5.1 | Deploy on caGrid Cluster | 1d | 2006-04-17 | 2006-04-17 |  | 60d |  |  |  |
| 27 | 1.1.1.3.6 | **caDSR to GME Mapping** | 2d? | 2006-04-17 | 2006-04-18 |  | 59d |  |  |  |
| 28 | 1.1.1.3.6.1 | Meet with working group to identify issues and requirements | 1d? | 2006-04-17 | 2006-04-17 |  | 60d |  |  |  |
| 29 | 1.1.1.3.6.2 | Initial design of solution | 2d | 2006-04-17 | 2006-04-18 |  | 59d |  |  |  |
| 30 | 1.1.1.3.7 | **caDSR Service** | 1d? | 2006-04-21 | 2006-04-21 |  | 56d |  |  |  |
| 31 | 1.1.1.3.7.1 | Migrate published metadata to new models | 1d? | 2006-04-21 | 2006-04-21 | 10, 14 | 56d |  |  |  |
| 32 | 1.1.1.4 | **Security** | 1d? | 2006-04-17 | 2006-04-17 |  | 60d |  |  |  |
| 33 | 1.1.1.4.1 | asdf | 1d? | 2006-04-17 | 2006-04-17 |  | 60d |  |  |  |
| 34 | 1.1.1.5 | **Infrastructure** | 2d | 2006-04-17 | 2006-04-18 |  | 59d |  |  |  |
| 35 | 1.1.1.5.1 | Install all core services insecurely on cluster | 2d | 2006-04-17 | 2006-04-18 |  | 59d |  |  |  |
| 36 | 1.1.1.5.2 | Install Security services securely on cluster | 2d | 2006-04-17 | 2006-04-18 |  | 59d |  |  |  |
| 37 | 1.1.2 | **Iteration II** | 15d? | 2006-05-22 | 2006-06-09 | 3 | 36d |  |  |  |
| 38 | 1.1.2.1 | **Data Services** | 5d | 2006-05-22 | 2006-05-26 |  | 46d |  |  | 6.4.4, 6.4.4.1 |
| 39 | 1.1.2.1.1 | asdf | 5d | 2006-05-22 | 2006-05-26 |  | 46d |  | start no earlier than 2006-05-01 |  |
| 40 | 1.1.2.2 | **Introduce** | 15d | 2006-05-22 | 2006-06-09 |  | 36d |  |  | 6.4.2, 6.4.2.1,6.4.2.2,6.4.3 |
| 41 | 1.1.2.2.1 | asdf | 15d | 2006-05-22 | 2006-06-09 |  | 36d |  | start no earlier than 2006-05-01 |  |
| 42 | 1.1.2.3 | **Metadata** | 12d? | 2006-05-22 | 2006-06-06 |  | 39d |  |  |  |
| 43 | 1.1.2.3.1 | **Finalize Metadata Models** | 2d? | 2006-05-22 | 2006-05-23 |  | 39d | 0d |  |  |
| 44 | 1.1.2.3.1.1 | Incorporate Feedback | 1d? | 2006-05-22 | 2006-05-22 |  | 40d |  |  |  |
| 45 | 1.1.2.3.1.2 | Update UML Models | 2d | 2006-05-22 | 2006-05-23 |  | 39d |  |  |  |
| 46 | 1.1.2.3.1.3 | Regenerate and Publish XSDs | 2d | 2006-05-22 | 2006-05-23 |  | 39d |  |  |  |
| 47 | 1.1.2.3.2 | **Discovery Client** | 5d | 2006-05-24 | 2006-05-30 | 43 | 39d | 0d |  |  |
| 48 | 1.1.2.3.2.1 | Update for Finalized Metadata Models | 5d | 2006-05-24 | 2006-05-30 |  | 39d |  |  |  |

| ID | WBS | Task | Duration | Start | Finish | Predecessors | Total slack | Free slack | Constraint | Text1 |
| --- | --- | --- | --- | --- | --- | --- | --- | --- | --- | --- |
| 49 | 1.1.2.3.3 | **Index Service** | 5d? | 2006-05-22 | 2006-05-26 |  | 46d |  |  |  |
| 50 | 1.1.2.3.3.1 | Modify to support communication with secure services | 5d? | 2006-05-22 | 2006-05-26 |  | 46d |  |  |  |
| 51 | 1.1.2.3.4 | **caDSR Service** | 5d | 2006-05-24 | 2006-05-30 | 43 | 44d |  |  |  |
| 52 | 1.1.2.3.4.1 | Implement Service-side Metadata generation | 5d | 2006-05-24 | 2006-05-30 |  | 44d |  |  |  |
| 53 | 1.1.2.3.5 | **Discovery Portal** | 5d | 2006-05-31 | 2006-06-06 |  | 39d |  |  |  |
| 54 | 1.1.2.3.5.1 | Initial implementation of discovery portal | 5d | 2006-05-31 | 2006-06-06 | 47 | 39d |  |  |  |
| 55 | 1.1.2.4 | **Security** | 1d? | 2006-05-22 | 2006-05-22 |  | 50d |  |  |  |
| 56 | 1.1.2.4.1 | asdf | 1d? | 2006-05-22 | 2006-05-22 |  | 50d |  |  |  |
| 57 | 1.1.2.5 | **Infrastructure** | 2d | 2006-05-22 | 2006-05-23 |  | 49d |  |  |  |
| 58 | 1.1.2.5.1 | Develop functional test plan | 2d | 2006-05-22 | 2006-05-23 |  | 49d |  |  |  |
| 59 | 1.1.2.5.2 | Install "staging" services on cluster | 1d | 2006-05-22 | 2006-05-22 |  | 50d |  |  |  |
| 60 | 1.2 | **Software Development Prior to API Freeze** | 30d? | 2006-06-12 | 2006-07-21 | 2 | 36d | 0d |  |  |
| 61 | 1.2.1 | **Iteration I** | 15d? | 2006-06-12 | 2006-06-30 |  | 36d | 0d |  |  |
| 62 | 1.2.1.1 | **Data Services** | 5d | 2006-06-12 | 2006-06-16 |  | 46d |  |  | 6.4.4, 6.4.4.1 |
| 63 | 1.2.1.1.1 | asdf | 5d | 2006-06-12 | 2006-06-16 |  | 46d |  | start no earlier than 2006-05-01 |  |
| 64 | 1.2.1.2 | **Introduce** | 15d | 2006-06-12 | 2006-06-30 |  | 36d |  |  | 6.4.2, 6.4.2.1,6.4.2.2,6.4.3 |
| 65 | 1.2.1.2.1 | asdf | 15d | 2006-06-12 | 2006-06-30 |  | 36d |  | start no earlier than 2006-05-01 |  |
| 66 | 1.2.1.3 | **Metadata** | 1d? | 2006-06-12 | 2006-06-12 |  | 50d |  |  |  |
| 67 | 1.2.1.3.1 | asdf | 1d? | 2006-06-12 | 2006-06-12 |  | 50d |  |  |  |
| 68 | 1.2.1.4 | **Security** | 1d? | 2006-06-12 | 2006-06-12 |  | 50d |  |  |  |
| 69 | 1.2.1.4.1 | asdf | 1d? | 2006-06-12 | 2006-06-12 |  | 50d |  |  |  |
| 70 | 1.2.1.5 | **Infrastructure** | 1d? | 2006-06-12 | 2006-06-12 |  | 50d |  |  |  |
| 71 | 1.2.1.5.1 | asdf | 1d? | 2006-06-12 | 2006-06-12 |  | 50d |  |  |  |
| 72 | 1.2.2 | **Iteration II** | 15d? | 2006-07-03 | 2006-07-21 | 61 | 36d |  |  |  |
| 73 | 1.2.2.1 | **Data Services** | 5d | 2006-07-03 | 2006-07-07 |  | 46d |  |  | 6.4.4, 6.4.4.1 |
| 74 | 1.2.2.1.1 | asdf | 5d | 2006-07-03 | 2006-07-07 |  | 46d |  | start no earlier than 2006-05-01 |  |

| ID | WBS | Task | Duration | Start | Finish | Predecessors | Total slack | Free slack | Constraint | Text1 |
| --- | --- | --- | --- | --- | --- | --- | --- | --- | --- | --- |
| 75 | 1.2.2.2 | **Introduce** | 15d | 2006-07-03 | 2006-07-21 |  | 36d |  |  | 6.4.2, 6.4.2.1,6.4.2.2,6.4.3 |
| 76 | 1.2.2.2.1 | asdf | 15d | 2006-07-03 | 2006-07-21 |  | 36d |  | start no earlier than 2006-05-01 |  |
| 77 | 1.2.2.3 | **Metadata** | 1d? | 2006-07-03 | 2006-07-03 |  | 50d |  |  |  |
| 78 | 1.2.2.3.1 | asdf | 1d? | 2006-07-03 | 2006-07-03 |  | 50d |  |  |  |
| 79 | 1.2.2.4 | **Security** | 1d? | 2006-07-03 | 2006-07-03 |  | 50d |  |  |  |
| 80 | 1.2.2.4.1 | asdf | 1d? | 2006-07-03 | 2006-07-03 |  | 50d |  |  |  |
| 81 | 1.2.2.5 | **Infrastructure** | 1d? | 2006-07-03 | 2006-07-03 |  | 50d |  |  |  |
| 82 | 1.2.2.5.1 | asdf | 1d? | 2006-07-03 | 2006-07-03 |  | 50d |  |  |  |
| 83 | 1.3 | **Software Development Prior to 1.0 Release** | 30d? | 2006-07-24 | 2006-09-01 | 60 | 36d |  |  |  |
| 84 | 1.3.1 | **Iteration I** | 15d? | 2006-07-24 | 2006-08-11 |  | 36d | 0d |  |  |
| 85 | 1.3.1.1 | **Data Services** | 5d | 2006-07-24 | 2006-07-28 |  | 46d |  |  | 6.4.4, 6.4.4.1 |
| 86 | 1.3.1.1.1 | asdf | 5d | 2006-07-24 | 2006-07-28 |  | 46d |  | start no earlier than 2006-05-01 |  |
| 87 | 1.3.1.2 | **Introduce** | 15d | 2006-07-24 | 2006-08-11 |  | 36d |  |  | 6.4.2, 6.4.2.1,6.4.2.2,6.4.3 |
| 88 | 1.3.1.2.1 | asdf | 15d | 2006-07-24 | 2006-08-11 |  | 36d |  | start no earlier than 2006-05-01 |  |
| 89 | 1.3.1.3 | **Metadata** | 1d? | 2006-07-24 | 2006-07-24 |  | 50d |  |  |  |
| 90 | 1.3.1.3.1 | asdf | 1d? | 2006-07-24 | 2006-07-24 |  | 50d |  |  |  |
| 91 | 1.3.1.4 | **Security** | 1d? | 2006-07-24 | 2006-07-24 |  | 50d |  |  |  |
| 92 | 1.3.1.4.1 | asdf | 1d? | 2006-07-24 | 2006-07-24 |  | 50d |  |  |  |
| 93 | 1.3.1.5 | **Infrastructure** | 1d? | 2006-07-24 | 2006-07-24 |  | 50d |  |  |  |
| 94 | 1.3.1.5.1 | asdf | 1d? | 2006-07-24 | 2006-07-24 |  | 50d |  |  |  |
| 95 | 1.3.2 | **Iteration II** | 15d? | 2006-08-14 | 2006-09-01 | 84 | 36d |  |  |  |
| 96 | 1.3.2.1 | **Data Services** | 5d | 2006-08-14 | 2006-08-18 |  | 46d |  |  | 6.4.4, 6.4.4.1 |
| 97 | 1.3.2.1.1 | asdf | 5d | 2006-08-14 | 2006-08-18 |  | 46d |  | start no earlier than 2006-05-01 |  |
| 98 | 1.3.2.2 | **Introduce** | 15d | 2006-08-14 | 2006-09-01 |  | 36d |  |  | 6.4.2, 6.4.2.1,6.4.2.2,6.4.3 |
| 99 | 1.3.2.2.1 | asdf | 15d | 2006-08-14 | 2006-09-01 |  | 36d |  | start no earlier than 2006-05-01 |  |

| ID | WBS | Task | Type | Duration | Start | Finish | Predecessors | Total slack | Constraint |
| --- | --- | --- | --- | --- | --- | --- | --- | --- | --- |
| 100 | 1.3.2.3 | **Metadata** |  | 1d? | 2006-08-14 | 2006-08-14 |  | 50d |  |
| 101 | 1.3.2.3.1 | asdf |  | 1d? | 2006-08-14 | 2006-08-14 |  | 50d |  |
| 102 | 1.3.2.4 | **Security** |  | 1d? | 2006-08-14 | 2006-08-14 |  | 50d |  |
| 103 | 1.3.2.4.1 | asdf |  | 1d? | 2006-08-14 | 2006-08-14 |  | 50d |  |
| 104 | 1.3.2.5 | **Infrastructure** |  | 1d? | 2006-08-14 | 2006-08-14 |  | 50d |  |
| 105 | 1.3.2.5.1 | asdf |  | 1d? | 2006-08-14 | 2006-08-14 |  | 50d |  |
| 106 | 1.4 | caGrid Developer's Face to Face (Columbus, OH) |  | 2d | 2006-05-22 | 2006-05-23 |  | 109d | finish no earlier than 2006-05-23 |
| 107 | 1.5 | caGrid 1.0 Beta Freeze | milestone | 0d | 2006-06-30 | 2006-06-30 |  | 0d | must finish on 2006-06-30 |
| 108 | 1.6 | caGrid 1.0 Beta | milestone | 0d | 2006-07-13 | 2006-07-13 | 107 | 0d | must finish on 2006-07-13 |
| 109 | 1.7 | caGrid 1.0 Feature Freeze | milestone | 0d | 2006-08-18 | 2006-08-18 | 108 | 0d | must finish on 2006-08-18 |
| 110 | 1.8 | caGrid 1.0 Release | milestone | 0d | 2006-10-23 | 2006-10-23 | 109 | 0d | must finish on 2006-10-23 |
