# caGrid_Portal-2-1

Schedule from MS Project, 2008-11-05 to 2009-02-23, A marks actual dates.
NCI CBIIT

## Calendars

- Standard: Mon-Fri 08:00-12:00, 13:00-17:00; Sat-Sun off. Exceptions (off unless hours are given): 2008-11-11, 2008-11-27, 2008-12-25, 2009-01-01.

## Resources

| Resource |
| --- |
| Manav Kher |
| Joshua Phillips |
| Carolyln Klinger |
| John Eisenschmidt |
| Quality Assurance |
| Systems |
| 2 |

## Schedule

| ID | WBS | Task | Type | Duration | Start | Finish | Predecessors | Complete | Remaining | Total slack | Free slack | Constraint | Resources | Work | Actual work |
| --- | --- | --- | --- | --- | --- | --- | --- | --- | --- | --- | --- | --- | --- | --- | --- |
| 1 | 1.0 | **caGrid Portal 2.2** |  | 74.5d | 2008-11-05 A | 2009-02-23 |  | 48% | 38.81d | 0d |  |  |  | 631.2h | 292h |
| 2 | 1.1 | Start | milestone | 0d | 2008-11-05 | 2008-11-05 |  |  |  | 72.6d |  | start no earlier than 2008-11-05 |  |  |  |
| 3 | 1.2 | **Bug Fixes** |  | 0.5d | 2008-11-05 A | 2008-11-05 |  |  | 0.5d | 39d |  |  |  | 7.2h |  |
| 4 | 1.2.1 | Start | milestone | 0d | 2008-11-05 A | 2008-11-05 A | 2 | 100% |  |  |  |  |  |  |  |
| 5 | 1.2.2 | training grid syncgts URLs need to be updated |  | 0.5d | 2008-11-05 | 2008-11-05 | 4 |  |  | 63d | 0d |  | Manav Kher [90%] | 3.6h |  |
| 6 | 1.2.3 | Portal does not delete local user account when deleting liferay user account |  | 0.5d | 2008-11-05 | 2008-11-05 | 4 |  |  | 63d | 0d |  | Manav Kher [90%] | 3.6h |  |
| 7 | 1.2.4 | Finish | milestone | 0d | 2008-11-05 | 2008-11-05 | 5, 6 |  |  | 63d |  |  |  |  |  |
| 8 | 1.3 | **Enhancements** |  | 53.5d | 2008-11-05 A | 2009-01-23 |  | 71% | 15.29d | -14d | 0d |  |  | 352.8h | 252h |
| 9 | 1.3.1 | Start | milestone | 0d | 2008-11-05 A | 2008-11-05 A | 2 | 100% |  |  |  |  |  |  |  |
| 10 | 1.3.2 | Page Loading Performance Enhancements |  | 15d | 2008-11-05 A | 2008-12-04 A | 9 | 100% |  |  |  |  | Manav Kher [90%] | 108h | 108h |
| 11 | 1.3.3 | Upgrade to Liferay 5.0.1 |  | 5d | 2008-12-04 A | 2008-12-11 A | 10 | 100% |  |  |  |  | Manav Kher [90%] | 36h | 36h |
| 12 | 1.3.4 | Tech Stack Update to Latest Spring and Hibernate |  | 5d | 2008-12-11 A | 2008-12-18 A | 11 | 100% |  |  |  |  | Manav Kher [90%] | 36h | 36h |
| 13 | 1.3.5 | Refactor Build Process to Support IVY |  | 10d | 2008-12-18 A | 2009-01-05 A | 12 | 100% |  |  |  |  | Manav Kher [90%] | 72h | 72h |
| 14 | 1.3.6 | Community Portlets: Use Cases and SOPs |  | 10d | 2009-01-05 | 2009-01-19 | 13 |  |  | -14d | 0d |  | Manav Kher [90%] | 72h |  |
| 15 | 1.3.7 | Investigate LOE for Sect 508 Compiance |  | 2d | 2009-01-19 | 2009-01-21 | 14 |  |  | -14d | 0d |  | Manav Kher [90%] | 14.4h |  |
| 16 | 1.3.9 | Wireframes and Use Cases for Notification Framework |  | 2d | 2009-01-21 | 2009-01-23 | 15 |  |  | -14d | 0d |  | Manav Kher [90%] | 14.4h |  |
| 17 | 1.3.9 | Finish | milestone | 0d | 2009-01-23 | 2009-01-23 | 10, 11, 12, 13, 14, 16 |  |  | -14d | 0d |  |  |  |  |
| 18 | 1.4 | **Documentation** |  | 7.6d | 2009-02-09 | 2009-02-18 |  |  |  | -24.5d | 0d |  |  | 99.6h |  |
| 19 | 1.4.1 | Start | milestone | 0d | 2009-02-09 | 2009-02-09 | 7, 17 |  |  | -24.5d | 0d | start no earlier than 2009-02-09 |  |  |  |
| 20 | 1.4.2 | Update Admin Guide |  | 4d | 2009-02-09 | 2009-02-12 | 19 |  |  | -20.9d | 0d |  | Carolyln Klinger | 32h |  |
| 21 | 1.4.3 | Update Install Guide |  | 3d | 2009-02-09 | 2009-02-13 | 19 |  |  | -21.2d | 0d |  | Carolyln Klinger | 24h |  |
| 22 | 1.4.4 | Update User Guide |  | 5d | 2009-02-09 | 2009-02-18 | 19 |  |  | -24.5d | 0d |  | Carolyln Klinger | 40h |  |
| 23 | 1.4.5 | Release Notes |  | 0.5d | 2009-02-16 | 2009-02-16 | 19 |  |  | -22.4d | 0d |  | Manav Kher [90%] | 3.6h |  |
| 24 | 1.4.6 | Finish | milestone | 0d | 2009-02-18 | 2009-02-18 | 20, 21, 22, 23 |  |  | -24.5d | 0d |  |  |  |  |

| ID | WBS | Task | Type | Duration | Start | Finish | Predecessors | Complete | Remaining | Total slack | Constraint | Resources | Work | Actual work |
| --- | --- | --- | --- | --- | --- | --- | --- | --- | --- | --- | --- | --- | --- | --- |
| 25 | 1.5 | **QA** |  | 69d | 2008-11-05 A | 2009-02-13 |  | 33% | 46d | 0d |  |  | 120h | 40h |
| 26 | 1.5.1 | Start | milestone | 0d | 2008-11-05 A | 2008-11-05 A | 7, 17 | 100% |  |  |  | 2 |  |  |
| 27 | 1.5.2 | QA Iteration 1 (December) |  | 5d | 2008-12-08 A | 2008-12-12 A | 26 | 100% |  |  |  | Quality Assurance | 40h | 40h |
| 28 | 1.5.3 | QA Iteration 2 (January) |  | 5d | 2009-01-12 | 2009-01-16 | 27 |  |  | 15d | start no earlier than 2009-01-12 | Quality Assurance | 40h |  |
| 29 | 1.5.4 | QA Iteration 3 (February) |  | 5d | 2009-02-09 | 2009-02-13 | 28 |  |  | 0d | start no earlier than 2009-02-09 | Quality Assurance | 40h |  |
| 30 | 1.5.5 | Finish | milestone | 0d | 2009-02-13 | 2009-02-13 | 29 |  |  | 0d |  |  |  |  |
| 31 | 1.6 | **Deployment** |  | 5.5d | 2009-02-13 | 2009-02-23 |  |  |  | 0d |  |  | 51.6h |  |
| 32 | 1.6.1 | Start | milestone | 0d | 2009-02-13 | 2009-02-13 | 30 |  |  | 0d |  |  |  |  |
| 33 | 1.6.2 | Stage |  | 1d | 2009-02-16 | 2009-02-16 | 32 |  |  | 0d |  | Systems | 8h |  |
| 34 | 1.6.3 | App Scan |  | 3d | 2009-02-17 | 2009-02-19 | 33 |  |  | 0d |  | Systems | 24h |  |
| 35 | 1.6.4 | Production |  | 1d | 2009-02-20 | 2009-02-20 | 34, 24 |  |  | 0d |  | Systems | 8h |  |
| 36 | 1.6.5 | Update gforge |  | 0.5d | 2009-02-16 | 2009-02-16 | 32 |  |  | 5d |  | John Eisenschmidt; Manav Kher [90%] | 7.6h |  |
| 37 | 1.6.6 | Send Release Announcement |  | 0.5d | 2009-02-23 | 2009-02-23 | 35 |  |  | 0d |  | John Eisenschmidt | 4h |  |
| 38 | 1.6.5 | Finish | milestone | 0d | 2009-02-23 | 2009-02-23 | 37 |  |  | 0d |  |  |  |  |
| 39 | 1.7 | Finish | milestone | 0d | 2009-02-23 | 2009-02-23 | 38 |  |  | 0d |  |  |  |  |
